# AUTOPARKIN

Schedule from MS Project, 2017-10-16 to 2018-04-23, status date 2018-04-06, costs in $, A marks actual dates.

## Calendars

- SYSTEMPARK: Mon-Fri 09:00-13:00, 15:00-19:00; Sat-Sun off. Exceptions (off unless hours are given): 2017-12-07 (Día Festivo (Velitas)), 2018-03-12 (Día Festivo), 2018-03-26 to 2018-03-30 (Semana Santa).

## Resources

| Resource | Rate |
| --- | --- |
| Analista | 6250 |
| Hojas de Papel | 100 |
| Transporte | 5000 |
| Impresiones | 300 |
| Internet | 150000 |
| Diseñador |  |

## Schedule

| ID | WBS | Task | Duration | Start | Finish | Predecessors | Complete | Constraint | Resources | Work | Actual work | Cost | Actual cost |
| --- | --- | --- | --- | --- | --- | --- | --- | --- | --- | --- | --- | --- | --- |
| 1 | 1 | **Fase de Análisis** | 30d | 2017-10-16 A | 2017-11-24 A |  | 100% |  |  | 232h | 232h | 1,488,000 | 1,488,000 |
| 2 | 1.1 | Identificación del Problema | 1d | 2017-10-16 A | 2017-10-16 A |  | 100% |  | Analista; Transporte | 8h | 8h | 55,000 | 55,000 |
| 3 | 1.2 | Realizar los Instrumentos de Recolección de Información | 4d | 2017-10-17 A | 2017-10-20 A | 2 | 100% |  | Analista | 32h | 32h | 200,000 | 200,000 |
| 4 | 1.3 | Realizar Levantamiento de Información | 3d | 2017-10-23 A | 2017-10-25 A | 3 | 100% |  | Analista; Hojas de Papel [1000%]; Transporte [300%]; Impresiones [1000%] | 24h | 24h | 169,000 | 169,000 |
| 5 | 1.4 | Realizar el Informe de Levantamiento de Información | 2d | 2017-10-26 A | 2017-10-27 A | 4 | 100% |  | Analista; Hojas de Papel [1000%]; Impresiones [1000%] | 16h | 16h | 104,000 | 104,000 |
| 6 | 1.5 | Realizar el componente Metodologico | 3d | 2017-10-30 A | 2017-11-01 A | 5 | 100% |  | Analista; Hojas de Papel [1000%]; Impresiones [1000%] | 24h | 24h | 154,000 | 154,000 |
| 7 | 1.6 | Realizar los Mapa y Diagramas de Procesos | 8d | 2017-11-02 A | 2017-11-13 A | 6 | 100% |  | Analista | 64h | 64h | 400,000 | 400,000 |
| 8 | 1.7 | Establecer los Requerimientos | 5d | 2017-11-14 A | 2017-11-20 A | 7 | 100% |  | Analista | 40h | 40h | 250,000 | 250,000 |
| 9 | 1.8 | Realizar Inventario de Hardware y Software | 1d | 2017-11-21 A | 2017-11-21 A | 8 | 100% |  | Analista | 8h | 8h | 50,000 | 50,000 |
| 10 | 1.9 | Realizar Informe de Viabilidad Técnica y Economica | 2d | 2017-11-23 A | 2017-11-24 A | 9 | 100% |  | Analista; Hojas de Papel [1500%]; Impresiones [1500%] | 16h | 16h | 106,000 | 106,000 |
| 11 | 2 | **Fase de Diseño** | 51.75d? | 2018-02-01 A | 2018-04-23 A |  | 100% |  |  | 374h | 374h |  |  |
| 12 | 2.1 | Realizar el diagrama de casos de uso | 32.5d | 2018-02-01 A | 2018-03-20 A | 10 | 100% | finish no earlier than 2018-02-03 | Diseñador | 192h | 192h |  |  |
| 13 | 2.2 | Diligenciar el formato de casos de uso extendido | 2d | 2018-02-05 A | 2018-02-07 A | 12 | 100% | finish no earlier than 2018-02-07 | Diseñador | 16h | 16h |  |  |
| 14 | 2.3 | Realizar el modelo de entidad relación | 4d | 2018-02-08 A | 2018-02-13 A | 13 | 100% | finish no earlier than 2018-02-13 | Diseñador | 32h | 32h |  |  |
| 15 | 2.4 | Realizar el diccionario de datos | 4d | 2018-02-08 A | 2018-02-16 A | 14 | 100% | finish no earlier than 2018-02-13 | Diseñador | 32h | 32h |  |  |
| 16 | 2.5 | Realizar el diagrama de Gantt | 1d | 2018-02-14 A | 2018-02-19 A | 15 | 100% |  | Diseñador | 8h | 8h |  |  |
| 17 | 2.6 | Modelo de base de datos MER | 5.25d | 2018-03-31 A | 2018-04-09 A | 16 | 100% | finish no earlier than 2018-04-06 | Diseñador | 42h | 42h |  |  |
| 18 | 2.7 | Realizar prototipo de interfaz | 2.75d | 2018-04-12 A | 2018-04-16 A | 17 | 100% | finish no earlier than 2017-04-15 | Diseñador | 22h | 22h |  |  |
| 19 | 2.8 | Realizar el diagrama de despliegue | 3.75d? | 2018-04-18 A | 2018-04-23 A | 18 | 100% | finish no earlier than 2018-04-23 | Diseñador | 30h | 30h |  |  |
